# Step7

Schedule from MS Project, 2026-03-02 to 2026-08-12, status date 2026-05-10, costs in ₽, A marks actual dates.
Команда: 16 человек Длительность: 6 месяцев / Бюджет: 50 000 рублей
Команда: 16 человекДлительность: 6 месяцев / Бюджет: 50 000 рублей

## Calendars

- Стандартный: Mon-Fri 09:00-13:00, 14:00-18:00; Sat-Sun off. Exceptions (off unless hours are given): 2026-03-09 (8 марта), 2026-04-30 09:00-13:00, 14:00-17:00 (1 мая), 2026-05-01 (День Труда), 2026-05-08 09:00-13:00, 14:00-17:00 (9 мая), 2026-05-11 (9 мая), 2026-06-11 09:00-13:00, 14:00-17:00 (День России), 2026-06-12 (День России).

## Resources

| Resource | Group | Rate | Cost per use |
| --- | --- | --- | --- |
| Ведущий программист | Программирование | 10 | 100 |
| Программист №1 | Программирование | 7 | 50 |
| Программист №2 | Программирование | 7 | 50 |
| Программист №3 | Программирование | 7 | 50 |
| Программист №4 | Программирование | 7 | 50 |
| Системный аналитик | Анализ | 20 | 300 |
| Художник-дизайнер | Дизайн | 8 | 70 |
| Технический писатель | Документация | 5 | 20 |
| Web-дизайнер | Интернет | 7 | 50 |
| 3D аниматор | Дизайн | 8 | 70 |
| Мультимедиа-корреспондент | М-медиа | 3 | 20 |
| Наборщик-данных №1 | Ввод данных | 2 | 10 |
| Наборщик-данных №2 | Ввод данных | 2 | 10 |
| Наборщик-данных №3 | Ввод данных | 2 | 10 |
| Наборщик-данных №4 | Ввод данных | 2 | 10 |
| Наборщик-данных №5 | Ввод данных | 2 | 10 |
| Сервер |  | 2 |  |
| Наборщик-данных №6 | Ввод данных | 2 | 10 |
| Наборщик-данных №7 | Ввод данных | 2 | 10 |
| Наборщик-данных №8 | Ввод данных | 2 | 10 |
| Наборщик-данных №11 | Ввод данных | 2 | 10 |
| Наборщик-данных №10 | Ввод данных | 2 | 10 |
| Наборщик-данных №9 | Ввод данных | 2 | 10 |
| Наборщик-данных №14 | Ввод данных | 2 | 10 |
| Наборщик-данных №13 | Ввод данных | 2 | 10 |
| Наборщик-данных №12 | Ввод данных | 2 | 10 |
| Наборщик-данных №18 | Ввод данных | 2 | 10 |
| Наборщик-данных №17 | Ввод данных | 2 | 10 |
| Наборщик-данных №16 | Ввод данных | 2 | 10 |
| Наборщик-данных №15 | Ввод данных | 2 | 10 |
| Наборщик-данных №19 | Ввод данных | 2 | 10 |
| Наборщик-данных №20 | Ввод данных | 2 | 10 |

## Schedule

| ID | WBS | Task | Type | Duration | Start | Finish | Predecessors | Complete | Remaining | Baseline start | Baseline finish | Baseline duration | Total slack | Free slack | Resources | Work | Actual work | Cost | Baseline cost | Actual cost |
| --- | --- | --- | --- | --- | --- | --- | --- | --- | --- | --- | --- | --- | --- | --- | --- | --- | --- | --- | --- | --- |
| 1 | 1 | Начало проекта | milestone | 0d | 2026-03-02 09:00 A | 2026-03-02 09:00 A |  | 100% |  | 2026-03-02 09:00 | 2026-03-02 09:00 | 0d |  |  |  |  |  |  |  |  |
| 2 | 2 | **Создание интерфейса** |  | 85.92d | 2026-03-02 09:00 A | 2026-07-06 11:21 | 1 | 85% | 12.51d | 2026-03-02 09:00 | 2026-06-16 14:23 | 72.17d | 0d |  |  | 592h | 352h | 7,006 | 5,650 | 5,076 |
| 3 | 2.1 | **Разработка дизайна интерфейса** |  | 29d | 2026-03-02 09:00 A | 2026-04-10 18:00 A |  | 100% |  | 2026-03-02 09:00 | 2026-04-07 15:00 | 25.62d |  |  |  | 352h | 352h | 4,226 | 2,770 | 4,226 |
| 4 | 2.1.1 | Разработка 2D графических элементов |  | 3.3w | 2026-03-02 09:00 A | 2026-03-25 18:00 A |  | 100% |  | 2026-03-02 09:00 | 2026-03-24 12:00 | 3w |  |  | Художник-дизайнер | 132h | 132h | 1,126 | 1,030 | 1,126 |
| 5 | 2.1.2 | Разработка 3D графических элементов |  | 2.2w | 2026-03-02 09:00 A | 2026-03-18 12:00 A | 4SS | 100% |  | 2026-03-02 09:00 | 2026-03-17 11:00 | 2w |  |  | 3D аниматор | 88h | 88h | 774 | 710 | 774 |
| 6 | 2.1.3 | Создание заставки |  | 3.3w | 2026-03-18 12:00 A | 2026-04-10 18:00 A | 5 | 100% |  | 2026-03-17 11:00 | 2026-04-07 15:00 | 3w |  |  | 3D аниматор | 132h | 132h | 1,126 | 1,030 | 1,126 |
| 7 | 2.2 | Программирование интерфейса |  | 1.5w | 2026-06-24 16:21 | 2026-07-06 11:21 | 3, 12 |  |  | 2026-06-03 17:23 | 2026-06-16 14:23 | 1.5w | 0d |  | Программист №3; Программист №4; Программист №1; Программист №2 | 240h |  | 1,780 | 1,880 |  |
| 8 | 3 | **Построение базы объектов** |  | 86.18d | 2026-03-24 17:04 A | 2026-07-28 12:29 |  | 60% | 34.3d | 2026-03-24 12:00 | 2026-05-13 12:49 | 33.85d | 10.87d |  | Сервер | 5739.41h | 2130.5h | 16,047.18 | 12,181.64 | 8,082.97 |
| 9 | 3.1 | Анализ и построение структуры базы объектов |  | 2w | 2026-03-24 17:04 A | 2026-04-13 15:13 A |  | 100% |  | 2026-03-24 12:00 | 2026-04-07 15:00 | 2w |  |  | Системный аналитик | 80h | 80h | 1,900 | 1,900 | 1,900 |
| 10 | 3.2 | Программирование средств обработки базы объектов |  | 3.12w | 2026-04-14 16:02 A | 2026-07-06 15:10 | 9 | 96% | 0.14w | 2026-04-08 15:49 | 2026-04-20 10:49 | 1.5w | 10.87d | 0d | Программист №3; Программист №4; Программист №1; Программист №2 | 240h | 232.76h | 1,858.81 | 1,880 | 1,808.11 |
| 11 | 3.3 | Наполнение базы объектов |  | 3.16w | 2026-07-06 15:10 | 2026-07-28 12:29 | 10 |  |  | 2026-04-20 10:49 | 2026-05-13 12:49 | 3w | 10.87d |  | Наборщик-данных №1; Наборщик-данных №2; Наборщик-данных №3; Наборщик-данных №4; Наборщик-данных №5; Наборщик-данных №6; Наборщик-данных №7; Наборщик-данных №8; Наборщик-данных №9; Наборщик-данных №10; Наборщик-данных №11; Наборщик-данных №12; Наборщик-данных №13; Наборщик-данных №14; Наборщик-данных №15; Наборщик-данных №16; Наборщик-данных №17; Наборщик-данных №18; Наборщик-данных №19 | 2400h |  | 4,990 | 5,000 |  |
| 12 | 4 | **Создание ядра GIS** |  | 78.42d | 2026-03-02 09:00 A | 2026-06-24 16:21 |  | 59% | 31.87d | 2026-03-02 09:00 | 2026-06-03 17:23 | 64.67d | 0d |  |  | 1880h | 723.21h | 18,185.53 | 18,229.33 | 9,030.78 |
| 13 | 4.1 | Анализ и проектирование ядра |  | 3.98w | 2026-03-02 09:00 A | 2026-03-30 18:00 A |  | 100% |  | 2026-03-02 09:00 | 2026-03-24 12:00 | 3.08w |  |  | Ведущий программист; Системный аналитик | 240h | 240h | 4,000 | 4,000 | 4,000 |
| 14 | 4.2 | Создание модели ядра |  | 3.53w | 2026-03-31 09:00 A | 2026-04-28 09:47 A | 13 | 100% |  | 2026-03-24 12:00 | 2026-04-07 12:49 | 2.02w |  |  | Ведущий программист; Программист №1; Программист №2; Программист №3; Программист №4 | 400h | 400h | 3,473.07 | 3,336.46 | 3,473.07 |
| 15 | 4.3 | Тестирование модели ядра |  | 0.25w | 2026-04-14 12:49 A | 2026-04-28 12:47 | 14 | 70% | 0.07w | 2026-04-07 12:49 | 2026-04-08 15:49 | 0.25w | 7.28d | 0d | Программист №1; Программист №2; Программист №3; Программист №4 | 40h | 28h | 399.6 | 480 | 315.6 |
| 16 | 4.4 | Создание рабочей версии ядра |  | 7.51w | 2026-04-28 12:47 A | 2026-06-24 16:21 | 15 | 18% | 6.13w | 2026-04-08 15:49 | 2026-06-03 17:23 | 7.56w | 0d |  | Ведущий программист; Программист №1; Программист №2; Программист №3; Программист №4 | 1200h | 55.21h | 9,312.87 | 9,412.87 | 652.12 |
| 17 | 5 | Создание мультимедиа – наполнения |  | 6w | 2026-04-13 09:00 A | 2026-05-29 17:00 | 3 | 58% | 2.55w | 2026-04-07 15:00 | 2026-05-22 16:00 | 6w | 51.31d |  | Мультимедиа-корреспондент | 240h | 138h | 740 | 740 | 434 |
| 18 | 6 | Создание справочной системы |  | 2w | 2026-07-16 11:21 | 2026-07-30 17:21 | 7 |  |  | 2026-06-25 17:23 | 2026-07-10 10:23 | 2w | 8.39d |  | Технический писатель | 80h |  | 420 | 420 |  |
| 19 | 7 | **Создание руководства пользователя** |  | 18d | 2026-06-22 11:21 | 2026-07-16 11:21 | 7FS-10d |  |  | 2026-06-01 12:23 | 2026-06-25 17:23 | 17.38d | 0d |  |  | 160h |  | 1,010 | 1,010 |  |
| 20 | 7.1 | Разработка дизайна руководства |  | 1w | 2026-06-22 11:21 | 2026-06-29 14:21 |  |  |  | 2026-06-01 12:23 | 2026-06-08 14:23 | 1w | 0d |  | Художник-дизайнер | 40h |  | 390 | 390 |  |
| 21 | 7.2 | Написание руководства пользователя |  | 3w | 2026-06-24 11:21 | 2026-07-16 11:21 | 20SS+2d |  |  | 2026-06-03 12:23 | 2026-06-25 17:23 | 3w | 0d |  | Технический писатель | 120h |  | 620 | 620 |  |
| 22 | 8 | **Создание web-сайта и поддержка** |  | 24.88d | 2026-06-24 11:21 | 2026-07-29 10:21 |  |  |  | 2026-06-03 12:23 | 2026-07-08 10:23 | 23.62d | 0d |  |  | 248h |  | 2,106 | 2,106 |  |
| 23 | 8.1 | Разработка структуры сайта |  | 1d | 2026-06-24 11:21 | 2026-06-25 11:21 | 21SS |  |  | 2026-06-03 12:23 | 2026-06-04 12:23 | 1d | 0d |  | Web-дизайнер | 8h |  | 106 | 106 |  |
| 24 | 8.2 | Разработка дизайна сайта |  | 1.48w | 2026-06-25 11:21 | 2026-07-06 17:21 | 23 |  |  | 2026-06-04 12:23 | 2026-06-16 16:23 | 1.43w | 0d |  | Web-дизайнер; 3D аниматор; Художник-дизайнер | 120h |  | 1,110 | 1,110 |  |
| 25 | 8.3 | Наполнение сайта |  | 3w | 2026-07-06 17:21 | 2026-07-29 10:21 | 24 |  |  | 2026-06-16 16:23 | 2026-07-08 10:23 | 3w | 0d |  | Web-дизайнер | 120h |  | 890 | 890 |  |
| 26 | 9 | Тестирование сайта |  | 3.03w | 2026-07-22 10:21 | 2026-08-12 11:28 | 22FS-1w |  |  | 2026-07-01 10:23 | 2026-07-22 11:29 | 3.03w | 0d |  | Программист №1; Программист №2; Программист №3; Программист №4 | 480h |  | 3,460 | 3,560 |  |
| 27 | 10 | Сдача сайта в эксплуатацию | milestone | 0d | 2026-08-12 11:28 | 2026-08-12 11:28 | 26 |  |  | 2026-07-22 11:29 | 2026-07-22 11:29 | 0d | 0d |  |  |  |  |  |  |  |

| ID | WBS | Task | Duration | Start | Finish | Complete | Remaining | Baseline start | Baseline finish | Baseline duration | Total slack | Constraint | Resources | Work | Actual work | Cost | Baseline cost | Actual cost |
| --- | --- | --- | --- | --- | --- | --- | --- | --- | --- | --- | --- | --- | --- | --- | --- | --- | --- | --- |
| 28 | 11 | **Совещание** | 95.75d | 2026-03-04 10:00 A | 2026-07-22 11:00 | 48% | 50.15d | 2026-03-04 10:00 | 2026-07-22 11:00 | 95.75d | 15.06d |  |  | 147h | 70h | 903 | 903 | 430 |
| 29 | 11.1 | Совещание 1 | 1h | 2026-03-04 10:00 A | 2026-03-04 11:00 A | 100% |  | 2026-03-04 10:00 | 2026-03-04 11:00 | 1h |  | start no earlier than 2026-03-04 10:00 | 3D аниматор; Ведущий программист; Мультимедиа-корреспондент; Системный аналитик; Технический писатель; Художник-дизайнер; Web-дизайнер | 7h | 7h | 43 | 43 | 43 |
| 30 | 11.2 | Совещание 2 | 1h | 2026-03-11 10:00 A | 2026-03-11 11:00 A | 100% |  | 2026-03-11 10:00 | 2026-03-11 11:00 | 1h |  | start no earlier than 2026-03-11 10:00 | 3D аниматор; Ведущий программист; Мультимедиа-корреспондент; Системный аналитик; Технический писатель; Художник-дизайнер; Web-дизайнер | 7h | 7h | 43 | 43 | 43 |
| 31 | 11.3 | Совещание 3 | 1h | 2026-03-18 10:00 A | 2026-03-18 11:00 A | 100% |  | 2026-03-18 10:00 | 2026-03-18 11:00 | 1h |  | start no earlier than 2026-03-18 10:00 | 3D аниматор; Ведущий программист; Мультимедиа-корреспондент; Системный аналитик; Технический писатель; Художник-дизайнер; Web-дизайнер | 7h | 7h | 43 | 43 | 43 |
| 32 | 11.4 | Совещание 4 | 1h | 2026-03-25 10:00 A | 2026-03-25 11:00 A | 100% |  | 2026-03-25 10:00 | 2026-03-25 11:00 | 1h |  | start no earlier than 2026-03-25 10:00 | 3D аниматор; Ведущий программист; Мультимедиа-корреспондент; Системный аналитик; Технический писатель; Художник-дизайнер; Web-дизайнер | 7h | 7h | 43 | 43 | 43 |
| 33 | 11.5 | Совещание 5 | 1h | 2026-04-01 10:00 A | 2026-04-01 11:00 A | 100% |  | 2026-04-01 10:00 | 2026-04-01 11:00 | 1h |  | start no earlier than 2026-04-01 10:00 | 3D аниматор; Ведущий программист; Мультимедиа-корреспондент; Системный аналитик; Технический писатель; Художник-дизайнер; Web-дизайнер | 7h | 7h | 43 | 43 | 43 |
| 34 | 11.6 | Совещание 6 | 1h | 2026-04-08 10:00 A | 2026-04-08 11:00 A | 100% |  | 2026-04-08 10:00 | 2026-04-08 11:00 | 1h |  | start no earlier than 2026-04-08 10:00 | 3D аниматор; Ведущий программист; Мультимедиа-корреспондент; Системный аналитик; Технический писатель; Художник-дизайнер; Web-дизайнер | 7h | 7h | 43 | 43 | 43 |
| 35 | 11.7 | Совещание 7 | 1h | 2026-04-15 10:00 A | 2026-04-15 11:00 A | 100% |  | 2026-04-15 10:00 | 2026-04-15 11:00 | 1h |  | start no earlier than 2026-04-15 10:00 | 3D аниматор; Ведущий программист; Мультимедиа-корреспондент; Системный аналитик; Технический писатель; Художник-дизайнер; Web-дизайнер | 7h | 7h | 43 | 43 | 43 |
| 36 | 11.8 | Совещание 8 | 1h | 2026-04-22 10:00 A | 2026-04-22 11:00 A | 100% |  | 2026-04-22 10:00 | 2026-04-22 11:00 | 1h |  | start no earlier than 2026-04-22 10:00 | 3D аниматор; Ведущий программист; Мультимедиа-корреспондент; Системный аналитик; Технический писатель; Художник-дизайнер; Web-дизайнер | 7h | 7h | 43 | 43 | 43 |
| 37 | 11.9 | Совещание 9 | 1h | 2026-04-29 10:00 A | 2026-04-29 11:00 A | 100% |  | 2026-04-29 10:00 | 2026-04-29 11:00 | 1h |  | start no earlier than 2026-04-29 10:00 | 3D аниматор; Ведущий программист; Мультимедиа-корреспондент; Системный аналитик; Технический писатель; Художник-дизайнер; Web-дизайнер | 7h | 7h | 43 | 43 | 43 |
| 38 | 11.10 | Совещание 10 | 1h | 2026-05-06 10:00 A | 2026-05-06 11:00 A | 100% |  | 2026-05-06 10:00 | 2026-05-06 11:00 | 1h |  | start no earlier than 2026-05-06 10:00 | 3D аниматор; Ведущий программист; Мультимедиа-корреспондент; Системный аналитик; Технический писатель; Художник-дизайнер; Web-дизайнер | 7h | 7h | 43 | 43 | 43 |
| 39 | 11.11 | Совещание 11 | 1h | 2026-05-13 10:00 | 2026-05-13 11:00 |  |  | 2026-05-13 10:00 | 2026-05-13 11:00 | 1h | 63.93d | start no earlier than 2026-05-13 10:00 | 3D аниматор; Ведущий программист; Мультимедиа-корреспондент; Системный аналитик; Технический писатель; Художник-дизайнер; Web-дизайнер | 7h |  | 43 | 43 |  |
| 40 | 11.12 | Совещание 12 | 1h | 2026-05-20 10:00 | 2026-05-20 11:00 |  |  | 2026-05-20 10:00 | 2026-05-20 11:00 | 1h | 58.93d | start no earlier than 2026-05-20 10:00 | 3D аниматор; Ведущий программист; Мультимедиа-корреспондент; Системный аналитик; Технический писатель; Художник-дизайнер; Web-дизайнер | 7h |  | 43 | 43 |  |
| 41 | 11.13 | Совещание 13 | 1h | 2026-05-27 10:00 | 2026-05-27 11:00 |  |  | 2026-05-27 10:00 | 2026-05-27 11:00 | 1h | 53.93d | start no earlier than 2026-05-27 10:00 | 3D аниматор; Ведущий программист; Мультимедиа-корреспондент; Системный аналитик; Технический писатель; Художник-дизайнер; Web-дизайнер | 7h |  | 43 | 43 |  |
| 42 | 11.14 | Совещание 14 | 1h | 2026-06-03 10:00 | 2026-06-03 11:00 |  |  | 2026-06-03 10:00 | 2026-06-03 11:00 | 1h | 48.93d | start no earlier than 2026-06-03 10:00 | 3D аниматор; Ведущий программист; Мультимедиа-корреспондент; Системный аналитик; Технический писатель; Художник-дизайнер; Web-дизайнер | 7h |  | 43 | 43 |  |
| 43 | 11.15 | Совещание 15 | 1h | 2026-06-10 10:00 | 2026-06-10 11:00 |  |  | 2026-06-10 10:00 | 2026-06-10 11:00 | 1h | 43.93d | start no earlier than 2026-06-10 10:00 | 3D аниматор; Ведущий программист; Мультимедиа-корреспондент; Системный аналитик; Технический писатель; Художник-дизайнер; Web-дизайнер | 7h |  | 43 | 43 |  |
| 44 | 11.16 | Совещание 16 | 1h | 2026-06-17 10:00 | 2026-06-17 11:00 |  |  | 2026-06-17 10:00 | 2026-06-17 11:00 | 1h | 40.06d | start no earlier than 2026-06-17 10:00 | 3D аниматор; Ведущий программист; Мультимедиа-корреспондент; Системный аналитик; Технический писатель; Художник-дизайнер; Web-дизайнер | 7h |  | 43 | 43 |  |
| 45 | 11.17 | Совещание 17 | 1h | 2026-06-24 10:00 | 2026-06-24 11:00 |  |  | 2026-06-24 10:00 | 2026-06-24 11:00 | 1h | 35.06d | start no earlier than 2026-06-24 10:00 | 3D аниматор; Ведущий программист; Мультимедиа-корреспондент; Системный аналитик; Технический писатель; Художник-дизайнер; Web-дизайнер | 7h |  | 43 | 43 |  |
| 46 | 11.18 | Совещание 18 | 1h | 2026-07-01 10:00 | 2026-07-01 11:00 |  |  | 2026-07-01 10:00 | 2026-07-01 11:00 | 1h | 30.06d | start no earlier than 2026-07-01 10:00 | 3D аниматор; Ведущий программист; Мультимедиа-корреспондент; Системный аналитик; Технический писатель; Художник-дизайнер; Web-дизайнер | 7h |  | 43 | 43 |  |
| 47 | 11.19 | Совещание 19 | 1h | 2026-07-08 10:00 | 2026-07-08 11:00 |  |  | 2026-07-08 10:00 | 2026-07-08 11:00 | 1h | 25.06d | start no earlier than 2026-07-08 10:00 | 3D аниматор; Ведущий программист; Мультимедиа-корреспондент; Системный аналитик; Технический писатель; Художник-дизайнер; Web-дизайнер | 7h |  | 43 | 43 |  |
| 48 | 11.20 | Совещание 20 | 1h | 2026-07-15 10:00 | 2026-07-15 11:00 |  |  | 2026-07-15 10:00 | 2026-07-15 11:00 | 1h | 20.06d | start no earlier than 2026-07-15 10:00 | 3D аниматор; Ведущий программист; Мультимедиа-корреспондент; Системный аналитик; Технический писатель; Художник-дизайнер; Web-дизайнер | 7h |  | 43 | 43 |  |
| 49 | 11.21 | Совещание 21 | 1h | 2026-07-22 10:00 | 2026-07-22 11:00 |  |  | 2026-07-22 10:00 | 2026-07-22 11:00 | 1h | 15.06d | start no earlier than 2026-07-22 10:00 | 3D аниматор; Ведущий программист; Мультимедиа-корреспондент; Системный аналитик; Технический писатель; Художник-дизайнер; Web-дизайнер | 7h |  | 43 | 43 |  |
