# Step3

Schedule from MS Project, 2026-03-02 to 2026-08-10, costs in ₽.
Команда: 16 человек Длительность: 6 месяцев / Бюджет: 50 000 рублей
Команда: 16 человекДлительность: 6 месяцев / Бюджет: 50 000 рублей

## Calendars

- Стандартный: Mon-Fri 09:00-13:00, 14:00-18:00; Sat-Sun off. Exceptions (off unless hours are given): 2026-03-09 (8 марта), 2026-04-30 09:00-13:00, 14:00-17:00 (1 мая), 2026-05-01 (День Труда), 2026-05-08 09:00-13:00, 14:00-17:00 (9 мая), 2026-05-11 (9 мая), 2026-06-11 09:00-13:00, 14:00-17:00 (День России), 2026-06-12 (День России).

## Resources

| Resource | Group | Rate | Cost per use |
| --- | --- | --- | --- |
| Ведущий программист | Программирование | 10 | 100 |
| Программист №1 | Программирование | 7 | 50 |
| Программист №2 | Программирование | 7 | 50 |
| Программист №3 | Программирование | 7 | 50 |
| Программист №4 | Программирование | 7 | 50 |
| Системный аналитик | Анализ | 20 | 300 |
| Художник-дизайнер | Дизайн | 8 | 70 |
| Технический писатель | Документация | 5 | 20 |
| Web-дизайнер | Интернет | 7 | 50 |
| 3D аниматор | Дизайн | 8 | 70 |
| Мультимедиа-корреспондент | М-медиа | 3 | 20 |
| Наборщик-данных №1 | Ввод данных | 2 | 10 |
| Наборщик-данных №2 | Ввод данных | 2 | 10 |
| Наборщик-данных №3 | Ввод данных | 2 | 10 |
| Наборщик-данных №4 | Ввод данных | 2 | 10 |
| Наборщик-данных №5 | Ввод данных | 2 | 10 |
| Сервер |  | 2 |  |

## Schedule

| ID | WBS | Task | Type | Duration | Start | Finish | Predecessors | Total slack | Free slack | Resources | Work | Cost |
| --- | --- | --- | --- | --- | --- | --- | --- | --- | --- | --- | --- | --- |
| 1 | 1 | Начало проекта | milestone | 0d | 2026-03-02 | 2026-03-02 |  | 111d |  |  |  |  |
| 2 | 2 | **Анализ архитектуры** |  | 25d | 2026-03-02 | 2026-04-06 |  | 0d |  |  | 320h | 5,900 |
| 3 | 2.1 | Анализ и построение структуры базы объектов |  | 2w | 2026-03-24 | 2026-04-06 |  | 11d | 0d | Системный аналитик | 80h | 1,900 |
| 4 | 2.2 | Анализ и проектирование ядра |  | 3w | 2026-03-02 | 2026-03-23 |  | 0d |  | Ведущий программист; Системный аналитик | 240h | 4,000 |
| 5 | 3 | **Проектирование** |  | 31d | 2026-03-02 | 2026-04-14 |  | 50d |  |  | 688h | 5,416 |
| 6 | 3.1 | Разработка 2D графических элементов |  | 3w | 2026-03-02 | 2026-04-06 |  | 81d | 0d | Художник-дизайнер | 120h | 1,030 |
| 7 | 3.2 | Разработка 3D графических элементов |  | 2w | 2026-03-02 | 2026-03-23 | 6SS | 81d | 0d | 3D аниматор | 80h | 710 |
| 8 | 3.3 | Создание заставки |  | 3w | 2026-03-24 | 2026-04-13 | 7 | 81d |  | 3D аниматор | 120h | 1,030 |
| 9 | 3.4 | Разработка дизайна руководства |  | 1w | 2026-03-11 | 2026-03-17 | 13 | 80d | 0d | Художник-дизайнер | 40h | 390 |
| 10 | 3.5 | Написание руководства пользователя |  | 3w | 2026-03-25 | 2026-04-14 | 9SS+2d | 80d |  | Технический писатель | 120h | 620 |
| 11 | 3.6 | **Создание web-сайта и поддержка** |  | 16d | 2026-03-02 | 2026-03-24 |  | 50d | 0d |  | 208h | 1,636 |
| 12 | 3.6.1 | Разработка структуры сайта |  | 1d | 2026-03-02 | 2026-03-02 |  | 50d | 0d | Web-дизайнер | 8h | 106 |
| 13 | 3.6.2 | Разработка дизайна сайта |  | 1w | 2026-03-03 | 2026-03-10 | 12 | 50d | 0d | Web-дизайнер; 3D аниматор; Художник-дизайнер | 120h | 1,110 |
| 14 | 3.6.3 | Создание справочной системы |  | 2w | 2026-03-11 | 2026-03-24 | 13 | 50d |  | Технический писатель | 80h | 420 |
| 15 | 4 | **Кодирование** |  | 111d | 2026-03-02 | 2026-08-10 |  | 0d |  |  | 4720h | 24,030 |
| 16 | 4.1 | Программирование интерфейса |  | 3w | 2026-03-02 | 2026-03-23 |  | 96d |  | Программист №3; Программист №4 | 240h | 1,780 |
| 17 | 4.2 | Программирование средств обработки базы объектов |  | 3w | 2026-04-07 | 2026-04-27 | 3 | 11d | 0d | Программист №3; Программист №4 | 240h | 1,780 |
| 18 | 4.3 | Наполнение базы объектов |  | 12w | 2026-04-28 | 2026-07-24 | 17 | 11d |  | Наборщик-данных №1; Наборщик-данных №2; Наборщик-данных №3; Наборщик-данных №4; Наборщик-данных №5 | 2400h | 4,850 |
| 19 | 4.4 | **Создание ядра GIS** |  | 96d | 2026-03-24 | 2026-08-10 |  | 0d |  |  | 1600h | 14,350 |
| 20 | 4.4.1 | Создание модели ядра |  | 5w | 2026-03-24 | 2026-04-27 | 4 | 0d |  | Ведущий программист; Программист №1 | 400h | 3,550 |
| 21 | 4.4.2 | Создание рабочей версии ядра |  | 13.2w | 2026-05-06 | 2026-08-10 | 25 | 0d |  | Ведущий программист; Программист №1; Программист №2 | 1200h | 9,800 |
| 22 | 4.5 | Создание мультимедиа – наполнения |  | 3w | 2026-03-02 | 2026-03-23 |  | 96d |  | Мультимедиа-корреспондент | 120h | 380 |
| 23 | 4.6 | Наполнение сайта |  | 3w | 2026-03-11 | 2026-03-31 | 13 | 90d |  | Web-дизайнер | 120h | 890 |
| 24 | 5 | **Тестирование** |  | 50d | 2026-03-18 | 2026-05-29 |  | 29d |  |  | 520h | 4,370 |
| 25 | 5.1 | Тестирование модели ядра |  | 1w | 2026-04-28 | 2026-05-06 | 20 | 0d |  | Программист №1 | 40h | 330 |
| 26 | 5.2 | Тестирование сайта |  | 8.2w | 2026-03-18 | 2026-05-29 | 11FS-1w | 50d | 0d | Ведущий программист; Программист №1; Программист №2 | 480h | 4,040 |
| 27 | 6 | Сдача сайта в эксплуатацию | milestone | 0d | 2026-05-29 | 2026-05-29 | 26 | 50d |  |  |  |  |
